Schedule from ProjectLibre, 2023-01-02 to 2023-06-08.

## Calendars

- Пятидневка: Mon-Fri 08:00-12:00, 13:00-17:00; Sat-Sun off.

## Resources

| Resource | Rate |
| --- | --- |
| Не назначено |  |
| Мененджер проекту | 550 |
| Замовник |  |
| QA Engineer | 370 |
| UI / UX Дизайнер | 450 |
| DB Розробник | 420 |
| Програміст | 363 |
| Фінансовий аналітик | 270 |
| HR Менеджер | 200 |
| Системний інженер | 410 |
| Адміністратор | 400 |
| Архітектор системи | 435 |
| Юрист | 250 |
| Інвестор |  |

## Schedule

| ID | WBS | Task | Type | Duration | Start | Finish | Predecessors | Complete | Constraint | Deadline | Resources |
| --- | --- | --- | --- | --- | --- | --- | --- | --- | --- | --- | --- |
| 1 | 1 | **Розробка та впровадження програмно-технічної системи управління логістикою транспортного підприємства** |  | 113.8d? | 2023-01-02 | 2023-06-08 |  | 13% |  |  |  |
| 2 | 1.1 | **Підготовка проекту** |  | 9.75d? | 2023-01-02 | 2023-01-13 |  | 100% | start no earlier than 2023-01-02 |  |  |
| 3 | 1.1.1 | **Специфікація вимог (функціональних, нефункціональних)** |  | 2.5d? | 2023-01-02 | 2023-01-04 |  | 100% |  |  |  |
| 4 | 1.1.1.1 | Консультація з клієнтом |  | 0.25d? | 2023-01-02 | 2023-01-02 |  | 100% | finish no later than 2023-01-02 |  | Мененджер проекту |
| 5 | 1.1.1.2 | Ухвалення чи внесення правок до специфікації |  | 0.5d? | 2023-01-02 | 2023-01-02 | 4 | 100% |  |  | Замовник |
| 6 | 1.1.1.3 | Визначення необхідного функціоналу |  | 1.5d? | 2023-01-03 | 2023-01-04 | 5 | 100% |  | 2023-01-04 | Мененджер проекту |
| 7 | 1.1.2 | **Документація вимог** |  | 1.5d | 2023-01-04 | 2023-01-05 |  | 100% |  |  |  |
| 8 | 1.1.2.1 | Перевірка вимог |  | 1.5d | 2023-01-04 | 2023-01-05 | 6 | 100% |  | 2023-01-05 | Мененджер проекту |
| 9 | 1.1.3 | **Естімація проекту** |  | 4d? | 2023-01-05 | 2023-01-11 | 8 | 100% |  |  |  |
| 10 | 1.1.3.1 | Проведення оцінки часу, необхідного для виконання, та вартості проекту | milestone | 0.75d? | 2023-01-05 | 2023-01-06 | 8 | 100% |  |  | Мененджер проекту |
| 11 | 1.1.3.2 | Опис ризиків та обмежень | milestone | 1d? | 2023-01-06 | 2023-01-09 | 10 | 100% |  |  | Мененджер проекту |
| 12 | 1.1.3.3 | Створення плану роботи |  | 2.25d? | 2023-01-09 | 2023-01-11 | 11 | 100% |  |  | Мененджер проекту |
| 13 | 1.1.4 | **Обговорення бюджету** |  | 1.75d? | 2023-01-11 | 2023-01-13 | 12 | 100% |  |  |  |
| 14 | 1.1.4.1 | Консультація з клієнтом |  | 0.38d? | 2023-01-11 | 2023-01-12 | 12 | 100% |  |  | Мененджер проекту |
| 15 | 1.1.4.2 | Визначення можливого бюджету |  | 0.38d? | 2023-01-11 | 2023-01-12 | 14 | 100% |  |  | Замовник |
| 16 | 1.1.4.3 | Пошук спонсорів |  | 1.75d? | 2023-01-11 | 2023-01-13 | 15 | 100% |  |  | Мененджер проекту |
| 17 | 1.1.4.4 | Аналіз потенційних спонсорів |  | 1d? | 2023-01-11 | 2023-01-12 | 16 | 100% |  |  | Фінансовий аналітик |
| 18 | 1.1.4.5 | **Підписання договорів стосовно інвестицій** |  | 0.25d? | 2023-01-12 | 2023-01-13 |  | 100% | start no earlier than 2023-01-11 |  |  |
| 19 | 1.1.4.5.1 | Підписання договорів менеджером |  | 0.05d | 2023-01-12 | 2023-01-13 | 17 | 100% |  |  | Мененджер проекту |
| 20 | 1.1.4.5.2 | Підписання договорів стосовно інвестицій |  | 0.05d? | 2023-01-13 | 2023-01-13 | 19 | 100% |  |  | Інвестор |
| 21 | 1.1.4.5.3 | Підписання договорів стосовно інвестицій |  | 0.05d | 2023-01-13 | 2023-01-13 | 20 | 100% |  |  | Замовник |
| 22 | 1.1.4.5.4 | Підписання договорів стосовно інвестицій |  | 0.05d | 2023-01-13 | 2023-01-13 | 21 | 100% |  |  | Фінансовий аналітик |
| 23 | 1.1.4.5.5 | Підписання договорів стосовно інвестицій |  | 0.05d? | 2023-01-13 | 2023-01-13 | 22 | 100% |  |  | Юрист |
| 24 | 1.2 | **Робота з командою розробників** |  | 8.5d? | 2023-01-13 | 2023-01-25 | 23 | 100% |  |  |  |
| 25 | 1.2.1 | Визначення необхідних робочих ресурсів та їх обовʼязків |  | 1d? | 2023-01-13 | 2023-01-16 | 23 | 100% |  |  | Мененджер проекту |
| 26 | 1.2.2 | Вибір та тестування кандидатів, наймання нових працівників |  | 5d? | 2023-01-16 | 2023-01-23 | 25 | 100% |  |  | HR Менеджер |
| 27 | 1.2.3 | Підписання договорів стосовно інвестицій |  | 2.5d? | 2023-01-23 | 2023-01-25 | 26 | 100% |  |  | Мененджер проекту |

Notes:
- 3: Text1: Визначено вимоги, план, бюджет і обсяг проекту, физики, отривано інвестиції, проведено естімацію, підписано договори
- 4: Text1: Технічне завдання
- 6: Text1: Список фукціональних вимог
- 7: Text1: Технічне завдання
- 8: Text1: Отримані правки щодо вимог
- 9: Text1: Визначені та утверджені вимоги до проекту
- 10: Text1: Утверджений список вимог, технічне завдання
- 11: Text1: Утверджений список вимог, технічне завдання
- 12: Text1: Естімація проекту
- 13: Text1: Створена естімація та графік проекту
- 14: Text1: Створена естімація та графік проекту
- 16: Text1: Визначені вимоги та проведена естімація проекту
- 18: Text1: Знайдені відповідні спеціалісти стосовно юридичних питань, які допоможуть на законному рівні затвердити проект.
- 24: Text1: Знайдені спеціалісти, які будуть відповідальні за підбір нових кадрів.
- 25: Text1: Спеціаліст по підбору персоналу знайдений, і відповідає за усіх необхідних спеціалістів
- 26: Text1: Знайдений HR менеджер. Вже вибрані різні платформи для пошуку нових працівників.
- 27: Text1: Створена команда, у якій кожен відповідає за свою частину обовʼязків, має завдання та дедлайни до них.

| ID | WBS | Task | Duration | Start | Finish | Predecessors | Resources |
| --- | --- | --- | --- | --- | --- | --- | --- |
| 28 | 1.3 | **Розробка архітектури системи та моделювання процесів** | 19.38d? | 2023-01-25 | 2023-02-21 | 27 |  |
| 29 | 1.3.1 | **Визначення структури системи, створення її моделі.** | 10.62d? | 2023-01-25 | 2023-02-09 | 27 |  |
| 30 | 1.3.1.1 | Створення концептуальної моделі | 4.38d? | 2023-01-25 | 2023-01-31 | 27 | Архітектор системи |
| 31 | 1.3.1.2 | Створення моделі | 6.25d? | 2023-01-31 | 2023-02-09 | 30 | Архітектор системи |
| 32 | 1.3.2 | Визначити та створити моделі процесів | 8.75d? | 2023-02-09 | 2023-02-21 | 31 | Архітектор системи |
| 33 | 1.4 | **Розробка ПЗ** | 37.5d? | 2023-02-21 | 2023-04-14 |  |  |
| 34 | 1.4.1 | **Створення дизайну інтерфейсу** | 15.69d? | 2023-02-21 | 2023-03-15 |  |  |
| 35 | 1.4.1.1 | Створення wireframes | 2.19d? | 2023-02-21 | 2023-02-24 | 32 | UI / UX Дизайнер |
| 36 | 1.4.1.2 | Тестування на відповідність вимогам | 1d? | 2023-02-24 | 2023-02-27 | 35 | QA Engineer |
| 37 | 1.4.1.3 | Консультація з клієнтом | 1d | 2023-02-27 | 2023-02-28 | 36 | Мененджер проекту |
| 38 | 1.4.1.4 | Перегляд wireframes, внесення правок | 0.5d? | 2023-02-28 | 2023-02-28 | 37 | Замовник |
| 39 | 1.4.1.5 | Створення прототипів | 9.38d? | 2023-02-28 | 2023-03-13 | 38 | UI / UX Дизайнер |
| 40 | 1.4.1.6 | Консультація з клієнтом | 0.62d? | 2023-03-13 | 2023-03-14 | 39 | Мененджер проекту |
| 41 | 1.4.1.7 | Перегляд дизайну, внесення правок | 1d? | 2023-03-14 | 2023-03-15 | 40 | Замовник |
| 42 | 1.4.2 | **Створення структури бази даних** | 11.5d? | 2023-02-21 | 2023-03-09 |  |  |
| 43 | 1.4.2.1 | Розробка концептуальної схеми БД | 2.5d? | 2023-02-21 | 2023-02-24 | 32 | DB Розробник |
| 44 | 1.4.2.2 | Розробка логічної схеми БД | 4d? | 2023-02-24 | 2023-03-02 | 43 | DB Розробник |
| 45 | 1.4.2.3 | Розробка фізичної схеми БД | 5d? | 2023-03-02 | 2023-03-09 | 44 | DB Розробник |
| 46 | 1.4.3 | **Розробка функціональності ПЗ** | 26d? | 2023-03-09 | 2023-04-14 |  |  |
| 47 | 1.4.3.1 | Розробка модуля авторизації / реєстрації користувачів | 3.5d? | 2023-03-09 | 2023-03-14 | 45 | Програміст |
| 48 | 1.4.3.2 | Розробка модуля керування акаунтами користувачів, відповідно до системи ролей | 5.5d? | 2023-03-14 | 2023-03-22 | 47 | Програміст |
| 49 | 1.4.3.3 | Розробка модуля генерації плану руху, його оптимізації та стеження за ним | 13d | 2023-03-09 | 2023-03-28 | 45 | Програміст |
| 50 | 1.4.3.4 | Розробка модуля прийняття, відміни, розподілу, оцінки та відстеження замовлень | 8d | 2023-03-28 | 2023-04-07 | 49 | Програміст |
| 51 | 1.4.3.5 | Розробка автоматичного звітування доставок та ефективності маршрутів | 13d? | 2023-03-28 | 2023-04-14 | 49 | Програміст |

Notes:
- 28: Text1: Технічне завдання із затвердженими функціональними та не функціональними вимогами, планом роботи
- 29: Text1: Вже визначені основні задачі та вимоги, сформована команда
- 30: Text1: Визначені вимоги проекту
- 31: Text1: Концептуальна модель, що відповідає всім поставленим вимогам
- 32: Text1: Створена модель системи, проведено аналіз окремих її частин
- 33: Text1: Технічне завдання із затвердженими вимогами, планом роботи, архітектура системи
- 34: Text1: Технічне завдання
- 35: Text1: Технічне завдання
- 36: Text1: Створені wireframes
- 37: Text1: Перевірані wireframes
- 38: Text1: Утверджені wireframes або внесені правки
- 39: Text1: Затверджені wireframes
- 40: Text1: Створенні прототипи інтерфейсу
- 41: Text1: Внесені правки або ухвалений дизайн
- 42: Text1: Архітерктура системи
- 43: Text1: Визначення вимог до архітектури
- 44: Text1: Розробка концептуальної БД
- 45: Text1: Розробка логічної моделі БД
- 46: Text1: Розроблена бази даних
- 47: Text1: Розробка функціональності програмної системи
- 48: Text1: Розробка модуля керування акаунтами користувачів
- 49: Text1: Розробка модуля керування акаунтами користувачів
- 50: Text1: Розробка модуля авторизації користувачів
- 51: Text1: Розроблені модулі керування логістикою марштрутів та замовленнями

| ID | WBS | Task | Duration | Start | Finish | Predecessors | Resources |
| --- | --- | --- | --- | --- | --- | --- | --- |
| 52 | 1.5 | **Тестування** | 19.25d? | 2023-04-14 | 2023-05-11 |  |  |
| 53 | 1.5.1 | Підготовка тест-кейсів | 3.25d? | 2023-04-14 | 2023-04-19 | 51 | QA Engineer |
| 54 | 1.5.2 | Тестування системи | 5d? | 2023-04-19 | 2023-04-26 | 53 | QA Engineer |
| 55 | 1.5.3 | Налагодження програмної системи | 11d? | 2023-04-26 | 2023-05-11 | 54 | Програміст |
| 56 | 1.6 | **Впровадження системи** | 9d? | 2023-05-11 | 2023-05-24 |  |  |
| 57 | 1.6.1 | Впровадження | 5d? | 2023-05-11 | 2023-05-18 | 55 | Системний інженер |
| 58 | 1.6.2 | Проведення навачання працівників | 4d? | 2023-05-18 | 2023-05-24 | 57 | Адміністратор |
| 59 | 1.7 | **Завершення проекту** | 11.12d? | 2023-05-24 | 2023-06-08 |  |  |
| 60 | 1.7.1 | Проектна документація | 8d? | 2023-05-24 | 2023-06-05 | 58 | Програміст |
| 61 | 1.7.2 | Перевірка та передача проекту | 3.12d? | 2023-06-05 | 2023-06-08 | 60 | Мененджер проекту |

Notes:
- 52: Text1: Завершення розробки усього програмного забезпечення
- 53: Text1: Завершення розробки усього програмного забезпечення
- 54: Text1: Звіт з тест-кейсами
- 55: Text1: Звіт про тестування системи
- 56: Text1: Повністю усі завершені тести
- 57: Text1: Наявність позитивнх звітів про усі пройдені види тестування
- 58: Text1: Завершено впровадження програмного забезпечення для керування логістикою транспортного підприємства
- 59: Text1: Виконані усі основні задачі, система задовольняє усім вимогам
- 60: Text1: Система створена протестована, і вже повноцінно працює
- 61: Text1: Система створена протестована, і вже повноцінно працює
